# Schedule

Schedule from MS Project, 2014-11-09 to 2015-06-10, 24 hours a day, A marks actual dates.

## Calendars

- 24 Hours: Mon-Sun 00:00-24:00.

## Resources

| Resource |
| --- |
| Colten |
| Steve |
| Golriz |

## Schedule

| ID | WBS | Task | Type | Duration | Start | Finish | Predecessors | Complete | Remaining | Total slack | Constraint | Resources | Work | Actual work | Text30 |
| --- | --- | --- | --- | --- | --- | --- | --- | --- | --- | --- | --- | --- | --- | --- | --- |
| 1 | 1 | **Plan** |  | 106.38d | 2014-11-10 08:00 A | 2015-02-24 17:00 A |  | 100% |  |  |  |  | 2233.93h | 2233.93h |  |
| 2 | 1.1 | Teaming up and Meeting with Advisor | manual | 4d | 2014-11-10 08:00 A | 2014-11-21 09:00 A |  | 100% |  |  |  | Colten; Steve; Golriz | 258h | 258h | 1.1 |
| 3 | 1.2 | Understanding the project and its requirements |  | 16d | 2014-11-10 08:00 A | 2015-01-08 14:20 A |  | 100% |  |  | finish no earlier than 2014-11-30 17:00 | Colten; Steve; Golriz | 917.33h | 917.33h | 1.2 |
| 4 | 1.3 | Meeting with sponsors |  | 1d | 2014-12-04 08:00 A | 2014-12-05 09:00 A |  | 100% |  |  | start no earlier than 2014-12-04 08:00 | Colten; Golriz; Steve | 42h | 42h |  |
| 5 | 1.4 | Reviewing the existing design and gathering info about the requirements |  | 9d | 2014-12-05 08:00 A | 2015-01-09 01:00 A |  | 100% |  |  | finish no earlier than 2015-01-07 17:00 | Colten; Golriz; Steve | 632h | 632h |  |
| 6 | 1.5 | Meeting with sponsors |  | 1d | 2015-01-08 08:00 A | 2015-01-09 09:00 A |  | 100% |  |  | start no earlier than 2015-01-08 08:00 | Colten; Golriz; Steve | 42h | 42h |  |
| 7 | 1.6 | Concept Generation and Evaluation |  | 1d | 2015-01-09 08:00 A | 2015-01-11 17:00 A |  | 100% |  |  | finish no earlier than 2015-01-11 17:00 | Colten; Steve | 32h | 32h |  |
| 8 | 1.7 | Write up the preliminary project proposal |  | 1d | 2015-01-11 08:00 A | 2015-01-14 17:00 A |  | 100% |  |  | finish no earlier than 2015-01-13 17:00 | Golriz | 24h | 24h |  |
| 9 | 1.8 | Review project proposal |  | 1d | 2015-01-14 08:00 A | 2015-01-16 17:00 A | 8 | 100% |  |  | finish no earlier than 2015-01-18 17:00 | Colten; Steve | 29.6h | 29.6h |  |
| 10 | 1.9 | Present Project Proposal |  | 1h | 2015-02-24 08:00 A | 2015-02-24 09:00 A |  | 100% |  |  | finish no earlier than 2015-02-24 17:00 |  | 1h | 1h |  |
| 11 | 1.10 | **Develop project requirement** |  | 47.38d | 2015-01-08 08:00 A | 2015-02-24 17:00 A |  | 100% |  |  |  |  | 256h | 256h |  |
| 12 | 1.10.1 | Develop the general project requirement |  | 4d | 2015-01-08 08:00 A | 2015-01-21 01:00 A | 9 | 100% |  |  | finish no earlier than 2015-01-20 17:00 | Colten; Steve; Golriz | 168h | 168h |  |
| 13 | 1.10.2 | Write up the detail project requirement |  | 2d | 2015-01-25 08:00 A | 2015-01-28 17:00 A | 12 | 100% |  |  |  | Golriz; Colten | 48h | 48h |  |
| 14 | 1.10.3 | Review project requirement document |  | 1d | 2015-02-02 08:00 A | 2015-02-03 17:00 A | 13 | 100% |  |  |  | Colten; Steve; Golriz | 40h | 40h |  |
| 15 | 1.10.4 | Gain Sponsor approval of requirements |  | 1d | 2015-02-23 17:00 A | 2015-02-24 17:00 A |  | 100% |  |  | finish no earlier than 2015-02-24 17:00 |  |  |  |  |
| 16 | 2 | **Circuit Design** |  | 75.33d | 2015-01-09 08:00 A | 2015-03-25 16:00 |  | 99% | 0.13d | 77.04d |  |  | 1087h | 1085.8h |  |
| 17 | 2.1 | Determine the necessary functional blocks |  | 5d | 2015-01-09 08:00 A | 2015-01-25 17:00 A |  | 100% |  |  | finish no earlier than 2015-01-25 17:00 | Colten; Steve | 224h | 224h |  |
| 18 | 2.2 | Review the block layout |  | 1d | 2015-01-25 08:00 A | 2015-01-28 17:00 A | 17 | 100% |  |  |  | Golriz | 24h | 24h |  |
| 19 | 2.3 | Determine the design concept of each block: problem to solve and available technology |  | 2d | 2015-02-01 08:00 A | 2015-02-09 16:00 A |  | 100% |  |  | finish no earlier than 2015-02-06 17:00 | Colten; Steve | 87h | 87h |  |
| 20 | 2.4 | Write the test plan |  | 2d | 2015-02-04 17:00 A | 2015-02-06 17:00 A |  | 100% |  |  | finish no earlier than 2015-02-06 17:00 | Colten | 48h | 48h |  |
| 21 | 2.5 | Review the test plan |  | 1d | 2015-02-06 08:00 A | 2015-02-10 17:00 |  | 95% | 0.05d | 120d | finish no earlier than 2015-02-07 17:00 | Steve; Golriz | 24h | 22.8h |  |
| 22 | 2.6 | Design the preliminary circuitry |  | 3d | 2015-01-30 08:00 A | 2015-02-11 17:00 A |  | 100% |  |  | finish no earlier than 2015-02-11 17:00 | Golriz | 72h | 72h |  |
| 23 | 2.7 | Review the circuit design |  | 1d | 2015-02-12 08:00 A | 2015-02-14 17:00 A | 22 | 100% |  |  | finish no earlier than 2015-02-14 17:00 | Colten; Steve | 32h | 32h |  |
| 24 | 2.8 | Generate the circuitry schematic and PCB layout on Eagle CAD |  | 2d | 2015-02-16 08:00 A | 2015-02-23 17:00 A | 23 | 100% |  |  | finish no earlier than 2015-02-20 17:00 | Golriz | 48h | 48h |  |
| 25 | 2.9 | Review and revise preliminary design |  | 1d | 2015-02-20 17:00 A | 2015-02-24 17:00 A | 24 | 100% |  |  |  | Steve; Colten | 24h | 24h |  |
| 26 | 2.10 | Finalize the preliminary schematic and PCB design |  | 2d | 2015-03-11 08:00 A | 2015-03-18 17:00 A | 25 | 100% |  |  | start no earlier than 2015-03-11 08:00 | Steve | 48h | 48h |  |
| 27 | 2.11 | Review the design with the sponsors |  | 1d | 2015-03-21 08:00 A | 2015-03-24 17:00 A | 26 | 100% |  |  |  | Colten; Golriz; Steve | 40h | 40h |  |
| 28 | 2.12 | Specify the component for the design |  | 7d | 2015-02-06 08:00 A | 2015-02-27 17:00 A |  | 100% |  |  | finish no earlier than 2015-02-27 17:00 | Colten; Golriz; Steve | 384h | 384h |  |
| 29 | 2.13 | Place order for the components |  | 1d | 2015-03-23 08:00 A | 2015-03-25 16:00 A |  | 100% |  |  | finish no earlier than 2015-03-02 17:00 | Colten; Steve | 32h | 32h |  |

| ID | WBS | Task | Type | Duration | Start | Finish | Predecessors | Complete | Remaining | Actual start | Actual finish | Total slack | Free slack | Constraint | Resources | Work | Actual work |
| --- | --- | --- | --- | --- | --- | --- | --- | --- | --- | --- | --- | --- | --- | --- | --- | --- | --- |
| 30 | 3 | **Build User Interface** |  | 29d | 2015-03-19 08:00 A | 2015-04-17 08:00 |  | 85% | 4.45d |  |  | 54.38d |  |  |  | 696h | 589.28h |
| 31 | 3.1 | **User Interface** |  | 29d | 2015-03-19 08:00 A | 2015-04-17 08:00 |  | 85% | 4.45d |  |  | 54.38d |  |  | Colten | 696h | 589.28h |
| 32 | 3.1.1 | Finalize configuration parameters | milestone | 2d | 2015-03-19 08:00 A | 2015-03-21 08:00 A |  | 100% |  |  |  |  |  | start no earlier than 2015-03-19 08:00 |  |  |  |
| 33 | 3.1.2 | Load sensor type definitions from file |  | 5d | 2015-03-25 08:00 A | 2015-03-30 08:00 |  | 70% | 1.5d |  |  | 72.38d |  | finish no earlier than 2015-03-29 17:00 |  |  |  |
| 34 | 3.1.3 | **CSV** |  | 26.62d | 2015-03-21 17:00 A | 2015-04-17 08:00 |  | 85% | 3.99d |  |  | 54.38d |  |  |  |  |  |
| 35 | 3.1.3.1 | write (sensor -> CSV) encoding |  | 14d | 2015-03-21 17:00 A | 2015-04-04 17:00 A |  | 100% |  |  |  |  |  | finish no earlier than 2015-04-04 17:00 |  |  |  |
| 36 | 3.1.3.2 | write (CSV -> sensor) decoding |  | 14d | 2015-04-03 08:00 A | 2015-04-17 08:00 |  | 70% | 4.2d |  |  | 54.38d |  | start no earlier than 2015-04-03 08:00 |  |  |  |
| 37 | 3.1.4 | **Add filesystem functions** |  | 19.38d | 2015-03-28 08:00 | 2015-04-16 17:00 |  | 100% |  | 2015-04-07 08:00 | 2015-04-10 17:00 |  |  |  |  |  |  |
| 38 | 3.1.4.1 | Save configurator |  | 3d | 2015-04-07 08:00 A | 2015-04-10 17:00 A |  | 100% |  |  |  |  |  | finish no earlier than 2015-04-10 17:00 |  |  |  |
| 39 | 3.1.4.2 | Load configurator |  | 3d | 2015-04-07 08:00 A | 2015-04-10 17:00 A |  | 100% |  |  |  |  |  | finish no earlier than 2015-04-10 17:00 |  |  |  |
| 40 | 3.1.5 | Add serial functionality |  | 4d | 2015-04-11 08:00 A | 2015-04-15 08:00 |  | 70% | 1.2d |  |  | 56.38d |  | start no earlier than 2015-04-11 08:00 |  |  |  |
| 41 | 4 | Write the firmware |  | 4d | 2014-11-09 16:00 A | 2014-11-22 16:00 |  | 90% | 0.4d |  |  | 200.04d |  |  | Steve | 96h | 86.4h |
| 42 | 5 | Send the boards to fab |  | 14d | 2015-03-23 08:00 A | 2015-05-18 17:00 A |  | 100% |  |  |  |  |  | start no earlier than 2015-03-23 08:00 | Golriz; Steve | 672h | 672h |
| 43 | 6 | Working on the poster |  | 48d | 2015-04-19 17:00 | 2015-06-06 17:00 |  |  |  |  |  | 4d |  | finish no earlier than 2015-06-06 17:00 |  |  |  |
| 44 | 7 | **Test** |  | 59.33d | 2015-04-03 17:00 A | 2015-06-02 01:00 |  | 11% | 52.89d |  |  | 8.67d |  |  |  | 1362.64h | 155.9h |
| 45 | 7.1 | **Test the hardware** |  | 21.62d | 2015-04-03 17:00 A | 2015-04-25 08:00 |  | 21% | 17.18d |  |  | 46.38d |  |  | Colten; Golriz; Steve | 759h | 155.9h |
| 46 | 7.1.1 | Inspect the boards and verify the connections |  | 1d | 2015-04-03 17:00 A | 2015-04-04 17:00 A |  | 100% |  |  |  |  |  | finish no earlier than 2015-04-04 17:00 |  |  |  |
| 47 | 7.1.2 | Populate the boards |  | 20d | 2015-04-04 17:00 A | 2015-04-24 17:00 |  | 30% | 14d |  |  | 47d |  | finish no earlier than 2015-04-24 17:00 |  |  |  |
| 48 | 7.1.3 | Verify soldered connections |  | 2d | 2015-04-13 08:00 A | 2015-04-15 08:00 |  | 30% | 1.4d |  |  | 52.38d | 0d | start no earlier than 2015-04-13 08:00 |  |  |  |
| 49 | 7.1.4 | Verify power levels, clock signal presence and frequency |  | 4d | 2015-04-15 08:00 | 2015-04-19 08:00 | 48 |  |  |  |  | 52.38d |  |  |  |  |  |
| 50 | 7.1.5 | Upload "Hello World" program on the main board |  | 3d | 2015-04-17 08:00 | 2015-04-20 08:00 |  |  |  |  |  | 51.38d |  | start no earlier than 2015-04-17 08:00 |  |  |  |
| 51 | 7.1.6 | Upload real firmware on the main board |  | 4d | 2015-04-21 08:00 | 2015-04-25 08:00 |  |  |  |  |  | 46.38d |  | start no earlier than 2015-04-21 08:00 |  |  |  |
| 52 | 7.1.7 | Connect sensor boards to "known good" device such as Arduino and verify readings |  | 3d | 2015-04-22 08:00 | 2015-04-25 08:00 |  |  |  |  |  | 46.38d |  | start no earlier than 2015-04-22 08:00 |  |  |  |
| 53 | 7.2 | **Integration test** |  | 4d | 2015-04-26 08:00 | 2015-04-30 08:00 |  |  |  |  |  | 41.38d |  |  | Colten; Golriz; Steve | 144h |  |
| 54 | 7.2.1 | Interface main board and ADC sensor |  | 4d | 2015-04-26 08:00 | 2015-04-30 08:00 |  |  |  |  |  | 41.38d |  | start no earlier than 2015-04-26 08:00 |  |  |  |
| 55 | 7.2.2 | Interface I2C sensor board with main board |  | 4d | 2015-04-26 08:00 | 2015-04-30 08:00 |  |  |  |  |  | 41.38d |  | start no earlier than 2015-04-26 08:00 |  |  |  |
| 56 | 7.3 | Hardware full assembly test |  | 7d | 2015-05-01 08:00 | 2015-05-08 08:00 |  |  |  |  |  | 33.38d |  | start no earlier than 2015-05-01 08:00 | Colten; Golriz; Steve | 248h |  |
| 57 | 7.4 | Software full assembly test |  | 7d | 2015-05-01 08:00 | 2015-05-08 08:00 |  |  |  |  |  | 33.38d |  | start no earlier than 2015-05-01 08:00 |  |  |  |
| 58 | 7.5 | Design and build the device closure (box) | milestone | 5d | 2015-05-11 08:00 | 2015-05-27 17:00 |  |  |  |  |  | 14d |  | start no earlier than 2015-05-11 08:00 | Colten; Steve | 128h |  |
| 59 | 7.6 | Alfa testing |  | 3d | 2015-05-18 08:00 | 2015-05-21 08:00 |  |  |  |  |  | 17.33d | 0d | start no earlier than 2015-05-18 08:00 |  |  |  |
| 60 | 7.7 | Perform the acceptance test |  | 3d | 2015-05-21 08:00 | 2015-06-02 01:00 | 59 |  |  |  |  | 8.67d |  | finish no earlier than 2015-05-23 17:00 | Colten; Steve; Golriz | 83.64h |  |
| 61 | 8 | Write the operation manual |  | 6d | 2014-11-09 16:00 | 2014-11-15 16:00 |  |  |  |  |  | 207.04d |  |  | Colten | 144h |  |
| 62 | 9 | Review the operation manual |  | 3d | 2015-05-14 08:00 | 2015-05-26 17:00 |  |  |  |  |  | 15d |  | finish no earlier than 2015-05-26 17:00 | Steve; Golriz | 144h |  |

| ID | WBS | Task | Duration | Start | Finish | Predecessors | Complete | Remaining | Actual start | Total slack | Constraint | Resources | Work |
| --- | --- | --- | --- | --- | --- | --- | --- | --- | --- | --- | --- | --- | --- |
| 63 | 10 | **Present** | 26.38d | 2015-05-09 08:00 | 2015-06-04 17:00 |  |  | 26.38d | 2015-05-08 08:00 |  |  |  | 226.22h |
| 64 | 10.1 | Complete the presentation documents (slides) | 6d | 2015-05-08 08:00 | 2015-05-29 17:00 |  |  |  |  | 0d | finish no earlier than 2015-05-29 17:00 | Golriz; Colten | 152h |
| 65 | 10.2 | Review the presentation documents | 1d | 2015-05-29 17:00 A | 2015-06-03 17:00 | 64 |  | 1d |  | 0d | finish no earlier than 2015-05-13 17:00 | Colten; Steve; Golriz | 24h |
| 66 | 10.3 | Final presentation of the system | 2d | 2015-06-03 17:00 | 2015-06-10 17:00 | 65 |  |  |  | 0d | finish no earlier than 2015-06-04 17:00 | Colten; Steve; Golriz | 50.22h |
| 67 | 11 | **WPR** | 203.01d | 2014-11-13 16:00 A | 2015-06-04 16:15 |  | 73% | 54.14d |  | 6.03d |  |  |  |
| 68 | 11.1 | WPR 1 | 15min | 2014-11-13 16:00 A | 2014-11-13 16:15 A |  | 100% |  |  |  | start no earlier than 2014-11-13 16:00 |  |  |
| 69 | 11.2 | WPR 2 | 15min | 2014-11-20 16:00 A | 2014-11-20 16:15 A |  | 100% |  |  |  | start no earlier than 2014-11-20 16:00 |  |  |
| 70 | 11.3 | WPR 3 | 15min | 2014-11-27 16:00 A | 2014-11-27 16:15 A |  | 100% |  |  |  | start no earlier than 2014-11-27 16:00 |  |  |
| 71 | 11.4 | WPR 4 | 15min | 2014-12-04 16:00 A | 2014-12-04 16:15 A |  | 100% |  |  |  | start no earlier than 2014-12-04 16:00 |  |  |
| 72 | 11.5 | WPR 5 | 15min | 2014-12-11 16:00 A | 2014-12-11 16:15 A |  | 100% |  |  |  | start no earlier than 2014-12-11 16:00 |  |  |
| 73 | 11.6 | WPR 6 | 15min | 2014-12-18 16:00 A | 2014-12-18 16:15 A |  | 100% |  |  |  | start no earlier than 2014-12-18 16:00 |  |  |
| 74 | 11.7 | WPR 7 | 15min | 2014-12-25 16:00 A | 2014-12-25 16:15 A |  | 100% |  |  |  | start no earlier than 2014-12-25 16:00 |  |  |
| 75 | 11.8 | WPR 8 | 15min | 2015-01-01 16:00 A | 2015-01-01 16:15 A |  | 100% |  |  |  | start no earlier than 2015-01-01 16:00 |  |  |
| 76 | 11.9 | WPR 9 | 15min | 2015-01-08 16:00 A | 2015-01-08 16:15 A |  | 100% |  |  |  | start no earlier than 2015-01-08 16:00 |  |  |
| 77 | 11.10 | WPR 10 | 15min | 2015-01-15 16:00 A | 2015-01-15 16:15 A |  | 100% |  |  |  | start no earlier than 2015-01-15 16:00 |  |  |
| 78 | 11.11 | WPR 11 | 15min | 2015-01-22 16:00 A | 2015-01-22 16:15 A |  | 100% |  |  |  | start no earlier than 2015-01-22 16:00 |  |  |
| 79 | 11.12 | WPR 12 | 15min | 2015-01-29 16:00 A | 2015-01-29 16:15 A |  | 100% |  |  |  | start no earlier than 2015-01-29 16:00 |  |  |
| 80 | 11.13 | WPR 13 | 15min | 2015-02-05 16:00 A | 2015-02-05 16:15 A |  | 100% |  |  |  | start no earlier than 2015-02-05 16:00 |  |  |
| 81 | 11.14 | WPR 14 | 15min | 2015-02-12 16:00 A | 2015-02-12 16:15 A |  | 100% |  |  |  | start no earlier than 2015-02-12 16:00 |  |  |
| 82 | 11.15 | WPR 15 | 15min | 2015-02-19 16:00 A | 2015-02-19 16:15 A |  | 100% |  |  |  | start no earlier than 2015-02-19 16:00 |  |  |
| 83 | 11.16 | WPR 16 | 15min | 2015-02-26 16:00 A | 2015-02-26 16:15 A |  | 100% |  |  |  | start no earlier than 2015-02-26 16:00 |  |  |
| 84 | 11.17 | WPR 17 | 15min | 2015-03-05 16:00 A | 2015-03-05 16:15 A |  | 100% |  |  |  | start no earlier than 2015-03-05 16:00 |  |  |
| 85 | 11.18 | WPR 18 | 15min | 2015-03-12 16:00 A | 2015-03-12 16:15 A |  | 100% |  |  |  | start no earlier than 2015-03-12 16:00 |  |  |
| 86 | 11.19 | WPR 19 | 15min | 2015-03-19 16:00 A | 2015-03-19 16:15 A |  | 100% |  |  |  | start no earlier than 2015-03-19 16:00 |  |  |
| 87 | 11.20 | WPR 20 | 15min | 2015-03-26 16:00 A | 2015-03-26 16:15 A |  | 100% |  |  |  | start no earlier than 2015-03-26 16:00 |  |  |
| 88 | 11.21 | WPR 21 | 15min | 2015-04-02 16:00 A | 2015-04-02 16:15 A |  | 100% |  |  |  | start no earlier than 2015-04-02 16:00 |  |  |
| 89 | 11.22 | WPR 22 | 15min | 2015-04-09 16:00 A | 2015-04-09 16:15 A |  | 100% |  |  |  | start no earlier than 2015-04-09 16:00 |  |  |
| 90 | 11.23 | WPR 23 | 15min | 2015-04-16 16:00 | 2015-04-16 16:15 |  |  |  |  | 55.03d | start no earlier than 2015-04-16 16:00 |  |  |
| 91 | 11.24 | WPR 24 | 15min | 2015-04-23 16:00 | 2015-04-23 16:15 |  |  |  |  | 48.03d | start no earlier than 2015-04-23 16:00 |  |  |
| 92 | 11.25 | WPR 25 | 15min | 2015-04-30 16:00 | 2015-04-30 16:15 |  |  |  |  | 41.03d | start no earlier than 2015-04-30 16:00 |  |  |
| 93 | 11.26 | WPR 26 | 15min | 2015-05-07 16:00 | 2015-05-07 16:15 |  |  |  |  | 34.03d | start no earlier than 2015-05-07 16:00 |  |  |
| 94 | 11.27 | WPR 27 | 15min | 2015-05-14 16:00 | 2015-05-14 16:15 |  |  |  |  | 27.03d | start no earlier than 2015-05-14 16:00 |  |  |
| 95 | 11.28 | WPR 28 | 15min | 2015-05-21 16:00 | 2015-05-21 16:15 |  |  |  |  | 20.03d | start no earlier than 2015-05-21 16:00 |  |  |
| 96 | 11.29 | WPR 29 | 15min | 2015-05-28 16:00 | 2015-05-28 16:15 |  |  |  |  | 13.03d | start no earlier than 2015-05-28 16:00 |  |  |
| 97 | 11.30 | WPR 30 | 15min | 2015-06-04 16:00 | 2015-06-04 16:15 |  |  |  |  | 6.03d | start no earlier than 2015-06-04 16:00 |  |  |
